# DCO Warranty Release Schedule

Schedule from MS Project, 2021-01-14 to 2021-07-11, A marks actual dates.
CWB

## Calendars

- Standard: Mon-Fri 08:00-12:00, 13:00-17:00; Sat-Sun off. Exceptions (off unless hours are given): 2021-02-15 (Stat Holiday).

## Resources

| Resource |
| --- |
| Kendyl |
| Chix |
| Sarah-Mae |
| Dayna |
| Temenos Team |

## Schedule

| ID | WBS | Task | Type | Duration | Start | Finish | Predecessors | Complete | Remaining | Total slack | Free slack | Constraint | Resources | Work | Actual work | Text1 |
| --- | --- | --- | --- | --- | --- | --- | --- | --- | --- | --- | --- | --- | --- | --- | --- | --- |
| 1 | 1 | **DCO Warranty Release Schedule** |  | 126d | 2021-01-14 A | 2021-07-11 |  | 8% | 115.67d | 0d |  |  |  | 2616h | 164h |  |
| 2 | 1.1 | **Milestones** |  | 100d | 2021-02-21 | 2021-07-11 |  |  |  | 0d |  |  |  |  |  |  |
| 3 | 1.1.1 | Release 4 | milestone | 0d | 2021-02-21 | 2021-02-21 |  |  |  | 100d | 0d | start no earlier than 2021-02-21 | Sarah-Mae |  |  |  |
| 4 | 1.1.2 | Release 5 | milestone | 0d | 2021-03-07 | 2021-03-07 |  |  |  | 90d | 0d | start no earlier than 2021-03-07 | Sarah-Mae |  |  |  |
| 5 | 1.1.3 | Release 6 | milestone | 0d | 2021-03-21 | 2021-03-21 |  |  |  | 80d | 0d | start no earlier than 2021-03-21 | Sarah-Mae |  |  |  |
| 6 | 1.1.4 | Release 7 | milestone | 0d | 2021-04-04 | 2021-04-04 |  |  |  | 70d | 0d | start no earlier than 2021-04-04 | Sarah-Mae |  |  |  |
| 7 | 1.1.5 | Release 8 | milestone | 0d | 2021-04-18 | 2021-04-18 |  |  |  | 60d | 0d | start no earlier than 2021-04-18 | Sarah-Mae |  |  |  |
| 8 | 1.1.6 | Release 9 | milestone | 0d | 2021-05-02 | 2021-05-02 |  |  |  | 50d | 0d | start no earlier than 2021-05-02 | Sarah-Mae |  |  |  |
| 9 | 1.1.7 | Release 10 | milestone | 0d | 2021-05-16 | 2021-05-16 |  |  |  | 40d | 0d | start no earlier than 2021-05-16 | Sarah-Mae |  |  |  |
| 10 | 1.1.8 | Release 11 | milestone | 0d | 2021-05-30 | 2021-05-30 |  |  |  | 30d | 0d | start no earlier than 2021-05-30 | Sarah-Mae |  |  |  |
| 11 | 1.1.9 | Release 12 | milestone | 0d | 2021-06-13 | 2021-06-13 |  |  |  | 20d | 0d | start no earlier than 2021-06-13 | Sarah-Mae |  |  |  |
| 12 | 1.1.10 | Release 13 | milestone | 0d | 2021-06-27 | 2021-06-27 |  |  |  | 10d | 0d | start no earlier than 2021-06-27 | Sarah-Mae |  |  |  |
| 13 | 1.1.11 | Release 14 | milestone | 0d | 2021-07-11 | 2021-07-11 |  |  |  | 0d |  | start no earlier than 2021-07-11 | Sarah-Mae |  |  |  |
| 14 | 1.2 | **Build Schedule** |  | 122d | 2021-01-14 A | 2021-07-05 |  | 8% | 112d | 4d |  |  |  | 2616h | 164h |  |
| 15 | 1.2.1 | **Build 5** |  | 23d | 2021-01-14 A | 2021-02-16 |  | 52% | 10.98d | 103d |  |  |  | 232h | 92h |  |
| 16 | 1.2.1.1 | Development |  | 9d | 2021-01-14 A | 2021-01-26 A |  | 100% |  |  |  |  | Temenos Team | 72h | 72h | Build 5 |
| 17 | 1.2.1.2 | Build 5 Handover | milestone | 0d | 2021-01-27 A | 2021-01-27 A | 16FS+1d | 100% |  |  |  |  | Kendyl |  |  |  |
| 18 | 1.2.1.3 | QA testing |  | 5d | 2021-01-28 A | 2021-02-03 | 17 | 50% | 2.5d | 104d | 0d |  | Chix | 40h | 20h | Build 5 |
| 19 | 1.2.1.4 | Contingency (testing remediations) |  | 7d | 2021-02-04 | 2021-02-12 | 18 |  |  | 104d |  |  | Chix; Kendyl | 112h |  | Build 5 |
| 20 | 1.2.1.5 | GNG / CR Finalized |  | 1d | 2021-02-16 | 2021-02-16 | 3FS-4d |  |  | 103d |  |  | Dayna | 8h |  | Build 5 |
| 21 | 1.2.2 | **Build 6** |  | 22d | 2021-01-28 A | 2021-03-01 |  | 41% | 13d | 94d |  |  |  | 232h | 72h |  |
| 22 | 1.2.2.1 | Development |  | 9d | 2021-01-28 A | 2021-02-09 A | 17 | 100% |  |  |  |  | Temenos Team | 72h | 72h |  |
| 23 | 1.2.2.2 | Build 6 Handover | milestone | 0d | 2021-02-10 A | 2021-02-10 | 22FS+1d | 25% | 0d | 94d | 0d |  | Kendyl |  |  |  |
| 24 | 1.2.2.3 | QA testing |  | 5d | 2021-02-11 | 2021-02-18 | 23 |  |  | 94d | 0d |  | Chix | 40h |  |  |
| 25 | 1.2.2.4 | Contingency (testing remediations) |  | 7d | 2021-02-19 | 2021-03-01 | 24 |  |  | 94d |  |  | Chix; Kendyl | 112h |  |  |
| 26 | 1.2.2.5 | GNG / CR Finalized |  | 1d | 2021-03-01 | 2021-03-01 | 4FS-5d |  |  | 94d |  |  | Dayna | 8h |  |  |

| ID | WBS | Task | Type | Duration | Start | Finish | Predecessors | Total slack | Free slack | Resources | Work |
| --- | --- | --- | --- | --- | --- | --- | --- | --- | --- | --- | --- |
| 27 | 1.2.3 | **Build 7** |  | 23d | 2021-02-10 | 2021-03-15 |  | 5d |  |  | 232h |
| 28 | 1.2.3.1 | Development |  | 9d | 2021-02-10 | 2021-02-23 | 22 | 5d | 0d | Temenos Team | 72h |
| 29 | 1.2.3.2 | Build 7 Handover | milestone | 0d | 2021-02-24 | 2021-02-24 | 28FS+1d | 85d | 0d | Kendyl |  |
| 30 | 1.2.3.3 | QA testing |  | 5d | 2021-02-25 | 2021-03-03 | 29 | 85d | 0d | Chix | 40h |
| 31 | 1.2.3.4 | Contingency (testing remediations) |  | 7d | 2021-03-04 | 2021-03-12 | 30 | 85d |  | Chix; Kendyl | 112h |
| 32 | 1.2.3.5 | GNG / CR Finalized |  | 1d | 2021-03-15 | 2021-03-15 | 5FS-5d | 84d |  | Dayna | 8h |
| 33 | 1.2.4 | **Build 8** |  | 24d | 2021-02-24 | 2021-03-29 |  | 5d |  |  | 240h |
| 34 | 1.2.4.1 | Development |  | 10d | 2021-02-24 | 2021-03-09 | 28 | 5d | 0d | Temenos Team | 80h |
| 35 | 1.2.4.2 | Build 8 Handover | milestone | 0d | 2021-03-10 | 2021-03-10 | 34FS+1d | 75d | 0d | Kendyl |  |
| 36 | 1.2.4.3 | QA testing |  | 5d | 2021-03-11 | 2021-03-17 | 35 | 75d | 0d | Chix | 40h |
| 37 | 1.2.4.4 | Contingency (testing remediations) |  | 7d | 2021-03-18 | 2021-03-26 | 36 | 75d |  | Chix; Kendyl | 112h |
| 38 | 1.2.4.5 | GNG / CR Finalized |  | 1d | 2021-03-29 | 2021-03-29 | 6FS-5d | 74d |  | Dayna | 8h |
| 39 | 1.2.5 | **Build 9** |  | 24d | 2021-03-10 | 2021-04-12 |  | 5d |  |  | 240h |
| 40 | 1.2.5.1 | Development |  | 10d | 2021-03-10 | 2021-03-23 | 34 | 5d | 0d | Temenos Team | 80h |
| 41 | 1.2.5.2 | Build 9 Handover | milestone | 0d | 2021-03-24 | 2021-03-24 | 40FS+1d | 65d | 0d | Kendyl |  |
| 42 | 1.2.5.3 | QA testing |  | 5d | 2021-03-25 | 2021-03-31 | 41 | 65d | 0d | Chix | 40h |
| 43 | 1.2.5.4 | Contingency (testing remediations) |  | 7d | 2021-04-01 | 2021-04-09 | 42 | 65d |  | Chix; Kendyl | 112h |
| 44 | 1.2.5.5 | GNG / CR Finalized |  | 1d | 2021-04-12 | 2021-04-12 | 7FS-5d | 64d |  | Dayna | 8h |
| 45 | 1.2.6 | **Build 10** |  | 24d | 2021-03-24 | 2021-04-26 |  | 5d |  |  | 240h |
| 46 | 1.2.6.1 | Development |  | 10d | 2021-03-24 | 2021-04-06 | 40 | 5d | 0d | Temenos Team | 80h |
| 47 | 1.2.6.2 | Build 10 Handover | milestone | 0d | 2021-04-07 | 2021-04-07 | 46FS+1d | 55d | 0d | Kendyl |  |
| 48 | 1.2.6.3 | QA testing |  | 5d | 2021-04-08 | 2021-04-14 | 47 | 55d | 0d | Chix | 40h |
| 49 | 1.2.6.4 | Contingency (testing remediations) |  | 7d | 2021-04-15 | 2021-04-23 | 48 | 55d |  | Chix; Kendyl | 112h |
| 50 | 1.2.6.5 | GNG / CR Finalized |  | 1d | 2021-04-26 | 2021-04-26 | 8FS-5d | 54d |  | Dayna | 8h |

| ID | WBS | Task | Type | Duration | Start | Finish | Predecessors | Total slack | Free slack | Resources | Work |
| --- | --- | --- | --- | --- | --- | --- | --- | --- | --- | --- | --- |
| 51 | 1.2.7 | **Build 11** |  | 24d | 2021-04-07 | 2021-05-10 |  | 5d |  |  | 240h |
| 52 | 1.2.7.1 | Development |  | 10d | 2021-04-07 | 2021-04-20 | 46 | 5d | 0d | Temenos Team | 80h |
| 53 | 1.2.7.2 | Build 11 Handover | milestone | 0d | 2021-04-21 | 2021-04-21 | 52FS+1d | 45d | 0d | Kendyl |  |
| 54 | 1.2.7.3 | QA testing |  | 5d | 2021-04-22 | 2021-04-28 | 53 | 45d | 0d | Chix | 40h |
| 55 | 1.2.7.4 | Contingency (testing remediations) |  | 7d | 2021-04-29 | 2021-05-07 | 54 | 45d |  | Chix; Kendyl | 112h |
| 56 | 1.2.7.5 | GNG / CR Finalized |  | 1d | 2021-05-10 | 2021-05-10 | 9FS-5d | 44d |  | Dayna | 8h |
| 57 | 1.2.8 | **Build 12** |  | 24d | 2021-04-21 | 2021-05-24 |  | 5d |  |  | 240h |
| 58 | 1.2.8.1 | Development |  | 10d | 2021-04-21 | 2021-05-04 | 52 | 5d | 0d | Temenos Team | 80h |
| 59 | 1.2.8.2 | Build 12 Handover | milestone | 0d | 2021-05-05 | 2021-05-05 | 58FS+1d | 35d | 0d | Kendyl |  |
| 60 | 1.2.8.3 | QA testing |  | 5d | 2021-05-06 | 2021-05-12 | 59 | 35d | 0d | Chix | 40h |
| 61 | 1.2.8.4 | Contingency (testing remediations) |  | 7d | 2021-05-13 | 2021-05-21 | 60 | 35d |  | Chix; Kendyl | 112h |
| 62 | 1.2.8.5 | GNG / CR Finalized |  | 1d | 2021-05-24 | 2021-05-24 | 10FS-5d | 34d |  | Dayna | 8h |
| 63 | 1.2.9 | **Build 13** |  | 24d | 2021-05-05 | 2021-06-07 |  | 5d |  |  | 240h |
| 64 | 1.2.9.1 | Development |  | 10d | 2021-05-05 | 2021-05-18 | 58 | 5d | 0d | Temenos Team | 80h |
| 65 | 1.2.9.2 | Build 13 Handover | milestone | 0d | 2021-05-19 | 2021-05-19 | 64FS+1d | 25d | 0d | Kendyl |  |
| 66 | 1.2.9.3 | QA testing |  | 5d | 2021-05-20 | 2021-05-26 | 65 | 25d | 0d | Chix | 40h |
| 67 | 1.2.9.4 | Contingency (testing remediations) |  | 7d | 2021-05-27 | 2021-06-04 | 66 | 25d |  | Chix; Kendyl | 112h |
| 68 | 1.2.9.5 | GNG / CR Finalized |  | 1d | 2021-06-07 | 2021-06-07 | 11FS-5d | 24d |  | Dayna | 8h |
| 69 | 1.2.10 | **Build 14** |  | 24d | 2021-05-19 | 2021-06-21 |  | 5d |  |  | 240h |
| 70 | 1.2.10.1 | Development |  | 10d | 2021-05-19 | 2021-06-01 | 64 | 5d | 0d | Temenos Team | 80h |
| 71 | 1.2.10.2 | Build 14 Handover | milestone | 0d | 2021-06-02 | 2021-06-02 | 70FS+1d | 15d | 0d | Kendyl |  |
| 72 | 1.2.10.3 | QA testing |  | 5d | 2021-06-03 | 2021-06-09 | 71 | 15d | 0d | Chix | 40h |
| 73 | 1.2.10.4 | Contingency (testing remediations) |  | 7d | 2021-06-10 | 2021-06-18 | 72 | 15d |  | Chix; Kendyl | 112h |
| 74 | 1.2.10.5 | GNG / CR Finalized |  | 1d | 2021-06-21 | 2021-06-21 | 12FS-5d | 14d |  | Dayna | 8h |

| ID | WBS | Task | Type | Duration | Start | Finish | Predecessors | Total slack | Free slack | Resources | Work |
| --- | --- | --- | --- | --- | --- | --- | --- | --- | --- | --- | --- |
| 75 | 1.2.11 | **Build 15** |  | 24d | 2021-06-02 | 2021-07-05 |  | 4d |  |  | 240h |
| 76 | 1.2.11.1 | Development |  | 10d | 2021-06-02 | 2021-06-15 | 70 | 5d | 0d | Temenos Team | 80h |
| 77 | 1.2.11.2 | Build 15 Handover | milestone | 0d | 2021-06-16 | 2021-06-16 | 76FS+1d | 5d | 0d | Kendyl |  |
| 78 | 1.2.11.3 | QA testing |  | 5d | 2021-06-17 | 2021-06-23 | 77 | 5d | 0d | Chix | 40h |
| 79 | 1.2.11.4 | Contingency (testing remediations) |  | 7d | 2021-06-24 | 2021-07-02 | 78 | 5d |  | Chix; Kendyl | 112h |
| 80 | 1.2.11.5 | GNG / CR Finalized |  | 1d | 2021-07-05 | 2021-07-05 | 13FS-5d | 4d |  | Dayna | 8h |
