# SB DCO Project Plan_072721_V1.4a

Schedule from MS Project, 2021-03-25 to 2022-02-28, A marks actual dates.

## Calendars

- Standard: Mon-Fri 08:00-12:00, 13:00-17:00; Sat-Sun off.

## Resources

| Resource |
| --- |
| Temenos |
| CWB |
| Temenos/CWB |
| Faizan |
| Ian |
| Stacy |
| Greg |
| PM |
| Product |
| Jeff |
| Legal |
| Gerry |
| Technical |
| Temenos PM |
| Program Owner |
| Dean |
| SB DCO |
| Sandra |
| Lorraine |
| Christina |
| Dilshad |
| Program Owners |
| Michael W. |
| CWB Architecture (Prakhar |
| Kyle) |
| Mule |
| 3rd Stream |
| Centralized Operations |
| Compliance |
| Risk |
| Thompson |
| Jamie |
| OCM |
| L&D |

## Schedule

| ID | WBS | Task | Type | Duration | Start | Finish | Predecessors | Complete | Remaining | Total slack | Free slack | Resources | Work | Actual work |
| --- | --- | --- | --- | --- | --- | --- | --- | --- | --- | --- | --- | --- | --- | --- |
| 1 | 1 | **Small Business DCO (includes Lending)** |  | 243d? | 2021-03-25 A | 2022-02-28 |  | 15% | 207.49d? | 0d |  |  | 6056h | 488h |
| 2 | 1.1 | **Initiation** |  | 57d? | 2021-03-25 | 2021-06-11 |  |  |  |  |  |  | 1848h |  |
| 3 | 1.1.1 | Scope Definition & Proposed Workflow |  | 5d | 2021-03-25 | 2021-03-31 |  |  |  | 220d | 5d | Faizan; Ian; Stacy; Greg | 160h |  |
| 4 | 1.1.2 | Proposed Workflow Matrix | manual | 5d | 2021-04-01 | 2021-04-07 |  |  |  |  |  | Faizan; Ian; Stacy; Greg | 160h |  |
| 5 | 1.1.3 | New Initiative Risk Assessment Process (NIRAP) | manual | 10d | 2021-04-08 | 2021-04-21 | 3 |  |  |  |  | PM | 80h |  |
| 6 | 1.1.4 | Product Definition & Finalization | manual | 8d | 2021-04-08 | 2021-04-19 | 3 |  |  |  |  | Greg; Product; Jeff | 192h |  |
| 7 | 1.1.5 | Online Lending Agreement | manual | 8d | 2021-04-08 | 2021-04-19 | 3 |  |  |  |  | Greg; Legal | 128h |  |
| 8 | 1.1.6 | Program/Project Charter/Project Statement | manual | 10d | 2021-04-08 | 2021-04-21 | 3 |  |  |  |  | PM | 80h |  |
| 9 | 1.1.7 | Project Delivery Strategy | manual | 3d | 2021-04-22 | 2021-04-26 | 7, 3 |  |  |  |  | PM; Stacy; Gerry | 72h |  |
| 10 | 1.1.8 | Project Management Plans and Supporting Plans | manual | 10d | 2021-04-22 | 2021-05-05 | 7 |  |  |  |  | PM | 80h |  |
| 11 | 1.1.9 | Deployment Plan | manual | 40d | 2021-04-19 | 2021-06-11 | 18 |  |  |  |  | PM; Technical | 640h |  |
| 12 | 1.1.10 | **Estimates & Do-ability** |  | 16d | 2021-04-01 | 2021-04-22 |  |  |  |  |  |  | 256h |  |
| 13 | 1.1.10.1 | Temenos | manual | 6d | 2021-04-01 | 2021-04-08 |  |  |  |  |  | Temenos PM | 48h |  |
| 14 | 1.1.10.2 | CWB | manual | 6d | 2021-04-01 | 2021-04-08 |  |  |  |  |  | PM | 48h |  |
| 15 | 1.1.10.3 | Cost-Benefit Analysis | manual | 10d | 2021-04-09 | 2021-04-22 | 13 |  |  |  |  | Stacy; Program Owner | 160h |  |
| 16 | 1.2 | **Planning** |  | 32d? | 2021-04-08 | 2021-05-21 |  |  |  |  |  |  | 1432h |  |
| 17 | 1.2.1 | Requirements Backlog Identification & Prioritization | manual | 6d | 2021-04-08 | 2021-04-15 | 3 |  |  |  |  | Ian; Dean | 96h |  |
| 18 | 1.2.2 | **Requirements Definition & Review / Approval** |  | 26d | 2021-04-16 | 2021-05-21 |  |  |  |  |  | Ian; Greg; SB DCO | 1112h |  |
| 19 | 1.2.2.1 | CWB Requirements Draft Sharing | manual | 1d | 2021-04-16 | 2021-04-16 |  |  |  |  |  | Ian | 8h |  |
| 20 | 1.2.2.2 | CWB Requirements Review | manual | 3d | 2021-04-19 | 2021-04-21 |  |  |  |  |  | Ian; Stacy; Sandra; Lorraine; Christina; Dilshad | 144h |  |
| 21 | 1.2.2.3 | CWB Requirements Approval | manual | 2d | 2021-04-22 | 2021-04-23 | 19 |  |  |  |  | Program Owners | 16h |  |
| 22 | 1.2.2.4 | Transition to Operation / Steady State (Client Support) | manual | 20d | 2021-04-26 | 2021-05-21 | 20 |  |  |  |  | Ian; Michael W. | 320h |  |
| 23 | 1.2.3 | **Solution & Services Definition** |  | 6d | 2021-04-16 | 2021-04-23 |  |  |  |  |  |  | 224h |  |
| 24 | 1.2.3.1 | Draft - Technical Design, Solution and Architecture | manual | 5d | 2021-04-16 | 2021-04-22 |  |  |  |  |  | CWB Architecture (Prakhar; Kyle) | 80h |  |
| 25 | 1.2.3.2 | Approve - Technical Design, Solution and Architecture | manual | 1d | 2021-04-23 | 2021-04-23 |  |  |  |  |  | CWB Architecture (Prakhar; Kyle) | 16h |  |
| 26 | 1.2.3.3 | Service Definitions | manual | 4d | 2021-04-19 | 2021-04-22 | 18 |  |  |  |  | Temenos; CWB; Mule; 3rd Stream | 128h |  |

| ID | WBS | Task | Type | Duration | Start | Finish | Predecessors | Complete | Remaining | Total slack | Constraint | Resources | Work | Actual work |
| --- | --- | --- | --- | --- | --- | --- | --- | --- | --- | --- | --- | --- | --- | --- |
| 27 | 1.3 | **Execution** |  | 110d? | 2021-04-14 A | 2021-09-14 |  | 41% | 64.5d? | 119d |  |  | 2616h | 488h |
| 28 | 1.3.1 | **Design/Requirements** |  | 55d | 2021-04-16 | 2021-07-01 |  |  |  | 0d |  |  | 1680h |  |
| 29 | 1.3.1.1 | SOP Manual (Standard Operational Process & Procedures) | manual | 15d | 2021-04-16 | 2021-05-06 |  |  |  |  |  | Greg; Centralized Operations | 240h |  |
| 30 | 1.3.1.2 | Regulatory Compliance Definition | manual | 15d | 2021-04-16 | 2021-05-06 |  |  |  |  |  | Compliance; Lorraine | 240h |  |
| 31 | 1.3.1.3 | Approval Criterial Finalization | manual | 15d | 2021-04-16 | 2021-05-06 |  |  |  |  |  | Greg; Risk; Thompson; Jamie | 480h |  |
| 32 | 1.3.1.4 | Updated Lending Process & Procedures | manual | 15d | 2021-04-16 | 2021-05-06 |  |  |  |  |  | Greg; Risk | 240h |  |
| 33 | 1.3.1.5 | Organizational Change Management | manual | 20d | 2021-05-07 | 2021-06-03 |  |  |  |  |  | OCM | 160h |  |
| 34 | 1.3.1.6 | L&D Readiness Plan/Materials | manual | 20d | 2021-06-04 | 2021-07-01 |  |  |  |  |  | OCM; L&D | 320h |  |
| 35 | 1.3.2 | **Build (Development)** |  | 110d? | 2021-04-14 A | 2021-09-14 |  | 67% | 36.02d? | 119d |  |  | 936h | 488h |
| 36 | 1.3.2.1 | Sprint 12 |  | 10d | 2021-04-14 A | 2021-04-27 A |  | 100% |  |  |  |  |  |  |
| 37 | 1.3.2.2 | Sprint 13 |  | 10d | 2021-04-28 A | 2021-05-11 A | 36 | 100% |  |  |  |  |  |  |
| 38 | 1.3.2.3 | Sprint 14 |  | 10d | 2021-05-12 A | 2021-05-25 A | 37 | 100% |  |  |  |  |  |  |
| 39 | 1.3.2.4 | Sprint 15 |  | 10d | 2021-05-26 A | 2021-06-08 A | 38 | 100% |  |  |  |  |  |  |
| 40 | 1.3.2.5 | **Sprint 16** |  | 10d? | 2021-06-09 A | 2021-06-22 A |  | 100% |  |  |  |  |  |  |
| 41 | 1.3.2.5.1 | Get: Sprint 16 Dev Complete |  | 10d | 2021-06-09 A | 2021-06-22 A | 39 | 100% |  |  |  |  |  |  |
| 42 | 1.3.2.5.2 | Get: Sprint 16 Demo |  | 1d? | 2021-06-22 A | 2021-06-22 A | 41FF | 100% |  |  |  |  |  |  |
| 43 | 1.3.2.6 | Get: Sprint 16 Build to CWB-SIT |  | 1d? | 2021-06-23 A | 2021-06-23 A | 41 | 100% |  |  |  | Temenos | 8h | 8h |
| 44 | 1.3.2.7 | CWB QA Functional Testing - Sprint 16 |  | 7d | 2021-06-24 A | 2021-07-02 A | 43 | 100% |  |  |  | CWB | 56h | 56h |
| 45 | 1.3.2.8 | **Sprint 17** |  | 10d? | 2021-06-23 A | 2021-07-06 A |  | 100% |  |  |  |  | 88h | 88h |
| 46 | 1.3.2.8.1 | Get: Sprint 17 Dev Complete |  | 10d | 2021-06-23 A | 2021-07-06 A | 40 | 100% |  |  |  | Temenos | 80h | 80h |
| 47 | 1.3.2.8.2 | Get: Sprint 17 Demo |  | 1d? | 2021-07-06 A | 2021-07-06 A | 46FF | 100% |  |  |  | Temenos | 8h | 8h |
| 48 | 1.3.2.9 | Get: Sprint 17 Build to CWB-SIT |  | 1d? | 2021-07-07 A | 2021-07-07 A | 46 | 100% |  |  |  | Temenos | 8h | 8h |
| 49 | 1.3.2.10 | CWB QA Functional Testing - Sprint 17 |  | 9d | 2021-07-07 A | 2021-07-19 A | 48SS | 100% |  |  |  | CWB | 72h | 72h |
| 50 | 1.3.2.11 | **Sprint 18** |  | 10d? | 2021-07-07 A | 2021-07-20 A |  | 100% |  |  |  |  | 88h | 88h |
| 51 | 1.3.2.11.1 | GIVE: Sprint 19 Dependency: Commercial Hard Pull Endpoint from BIG |  | 1d | 2021-07-09 A | 2021-07-09 A |  | 100% |  |  | start no earlier than 2021-07-09 |  |  |  |
| 52 | 1.3.2.11.2 | GET: Sprint 19 Dependency: Infinity Services/OLB Account Creation Test Data from CWB |  | 1d | 2021-07-16 A | 2021-07-16 A |  | 100% |  |  | start no earlier than 2021-07-16 |  |  |  |
| 53 | 1.3.2.11.3 | Get: Sprint 18 Dev Complete |  | 10d | 2021-07-07 A | 2021-07-20 A | 45 | 100% |  |  |  | Temenos | 80h | 80h |
| 54 | 1.3.2.11.4 | Get: Sprint 18 Demo |  | 1d? | 2021-07-20 A | 2021-07-20 A | 53FF | 100% |  |  |  | Temenos | 8h | 8h |
| 55 | 1.3.2.12 | Get: Sprint 18 Build to CWB-SIT |  | 1d | 2021-07-21 A | 2021-07-21 A | 53 | 100% |  |  | start no earlier than 2021-07-20 | Temenos | 8h | 8h |
| 56 | 1.3.2.13 | CWB QA Functional Testing - Sprint 18 |  | 10d | 2021-07-21 A | 2021-08-03 | 55SS | 90% | 1d | 149d |  | CWB | 80h | 72h |

| ID | WBS | Task | Duration | Start | Finish | Predecessors | Complete | Total slack | Free slack | Constraint | Resources | Work | Actual work | Text1 |
| --- | --- | --- | --- | --- | --- | --- | --- | --- | --- | --- | --- | --- | --- | --- |
| 57 | 1.3.2.14 | **Sprint 19** | 10d? | 2021-07-21 A | 2021-08-03 A |  | 100% |  |  |  |  | 88h | 88h |  |
| 58 | 1.3.2.14.1 | GIVE: Sprint 20 Dependency: Final Copy Changes for CWBSB-390, 219, and Product Spec (SLA Cash Management) from CWB | 1d | 2021-07-21 A | 2021-07-21 A | 56SS | 100% |  |  |  |  |  |  |  |
| 59 | 1.3.2.14.2 | Get: Sprint 19 Dev Complete | 10d | 2021-07-21 A | 2021-08-03 A | 53, 51FF, 52FF | 100% |  |  |  | Temenos | 80h | 80h |  |
| 60 | 1.3.2.14.3 | Get: Sprint 19 Demo | 1d? | 2021-08-03 A | 2021-08-03 A | 59FF | 100% |  |  |  | Temenos | 8h | 8h |  |
| 61 | 1.3.2.15 | Get: Sprint 19 Build to CWB-SIT | 1d? | 2021-08-04 | 2021-08-04 | 59 |  | 139d | 0d | start no earlier than 2021-08-03 | Temenos | 8h |  |  |
| 62 | 1.3.2.16 | CWB QA Functional Testing - Sprint 19 | 10d | 2021-08-04 | 2021-08-17 | 61SS |  | 139d |  |  | CWB | 80h |  |  |
| 63 | 1.3.2.17 | **Sprint 20** | 10d? | 2021-08-04 | 2021-08-17 |  |  | 0d |  |  |  | 88h |  |  |
| 64 | 1.3.2.17.1 | Get: Sprint 20 Dev Complete | 10d | 2021-08-04 | 2021-08-17 | 59 |  | 0d |  |  | Temenos | 80h |  |  |
| 65 | 1.3.2.17.2 | Get: Sprint 20 Demo | 1d? | 2021-08-17 | 2021-08-17 | 64FF |  | 139d |  |  | Temenos | 8h |  |  |
| 66 | 1.3.2.18 | Get: Sprint 20 Build to CWB-SIT | 1d? | 2021-08-18 | 2021-08-18 | 64 |  | 10d | 0d | start no earlier than 2021-08-17 | Temenos | 8h |  |  |
| 67 | 1.3.2.19 | CWB QA Functional Testing - Sprint 20 | 10d | 2021-08-18 | 2021-08-31 | 66SS |  | 10d |  |  | CWB | 80h |  |  |
| 68 | 1.3.2.20 | **Sprint 21** | 10d? | 2021-08-18 | 2021-08-31 |  |  | 0d |  |  |  | 88h |  |  |
| 69 | 1.3.2.20.1 | Get: Sprint 21 Dev Complete | 10d | 2021-08-18 | 2021-08-31 | 64 |  | 0d |  |  | Temenos | 80h |  |  |
| 70 | 1.3.2.20.2 | Get: Sprint 21 Demo | 1d? | 2021-08-31 | 2021-08-31 | 69FF |  | 129d |  |  | Temenos | 8h |  |  |
| 71 | 1.3.2.21 | Get: Sprint 21 Build to CWB-SIT | 1d? | 2021-09-01 | 2021-09-01 | 69 |  | 0d |  | start no earlier than 2021-08-17 | Temenos | 8h |  |  |
| 72 | 1.3.2.22 | CWB QA Functional Testing - Sprint 21 | 10d | 2021-09-01 | 2021-09-14 | 71SS |  | 0d |  |  | CWB | 80h |  |  |
| 73 | 1.3.3 | **Environment** | 7d? | 2021-09-01 | 2021-09-09 |  |  | 122d |  |  |  |  |  |  |
| 74 | 1.3.3.1 | Get: UAT environemnt set up | 1d? | 2021-09-01 | 2021-09-01 | 69 |  | 122d | 0d |  |  |  |  |  |
| 75 | 1.3.3.2 | Get: UAT Environment - URL | 1d | 2021-09-02 | 2021-09-02 | 74 |  | 122d | 0d |  |  |  |  |  |
| 76 | 1.3.3.3 | Validate and test UAT Env | 5d | 2021-09-03 | 2021-09-09 | 75 |  | 122d |  |  |  |  |  |  |
| 77 | 1.4 | **Test** | 20d | 2021-09-15 | 2021-10-12 |  |  | 0d |  |  |  | 160h |  |  |
| 78 | 1.4.1 | **CWB Testing** | 20d | 2021-09-15 | 2021-10-12 |  |  | 0d |  |  |  | 160h |  |  |
| 79 | 1.4.1.1 | CWB E2E testing | 10d | 2021-09-15 | 2021-09-28 | 67, 72 |  | 0d |  |  | CWB | 80h |  | Reduced from 15 days to 10 days |
| 80 | 1.4.1.2 | CWB Regression, BAT, Performance, Penetration Testing | 10d | 2021-09-29 | 2021-10-12 | 79 |  | 0d |  |  | CWB | 80h |  | Reduced from 15 days to 10 days |

| ID | WBS | Task | Type | Duration | Start | Finish | Predecessors | Total slack | Free slack | Constraint |
| --- | --- | --- | --- | --- | --- | --- | --- | --- | --- | --- |
| 81 | 1.5 | **Deploy** |  | 9d | 2021-10-13 | 2021-10-25 |  | 0d |  |  |
| 82 | 1.5.1 | Prep for PROD Deployment |  | 3d | 2021-10-13 | 2021-10-15 | 80 | 0d |  |  |
| 83 | 1.5.2 | Code Freeze |  | 5d | 2021-10-18 | 2021-10-22 | 82 | 0d |  |  |
| 84 | 1.5.3 | PROD Deployment |  | 1d | 2021-10-25 | 2021-10-25 | 83 | 0d |  |  |
| 85 | 1.5.4 | MILESTONE - SMALL BUSINESS DCO PRODUCTION DEPLOYMENT | milestone | 0d | 2021-10-25 | 2021-10-25 | 84, 78, 82 | 0d |  |  |
| 86 | 1.6 | **Closure** |  | 90d | 2021-10-26 | 2022-02-28 |  | 0d |  |  |
| 87 | 1.6.1 | Warranty support |  | 90d | 2021-10-26 | 2022-02-28 | 85SS | 0d |  |  |
| 88 | 1.6.2 | Close out Activities |  | 90d | 2021-10-26 | 2022-02-28 | 85SS | 0d |  |  |
| 91 | 1.7 | **OCM Plan** |  | 101d | 2021-09-13 | 2022-01-31 |  | 20d |  |  |
| 92 | 1.7.1 | Internal Communications |  | 101d | 2021-09-13 | 2022-01-31 |  | 20d |  | start no earlier than 2021-09-13 |
| 93 | 1.7.2 | External Communications |  | 1d | 2021-11-01 | 2021-11-01 |  | 85d |  | start no earlier than 2021-11-01 |
| 94 | 1.7.3 | Training & Readiness Activitities |  | 15d | 2021-10-04 | 2021-10-22 | 84SS-15d | 71d | 0d |  |
| 95 | 1.7.4 | Hypercare |  | 20d | 2021-10-25 | 2021-11-19 | 94 | 71d |  |  |
