# Small Biz DCO Project Plan

Schedule from MS Project, 2021-04-14 to 2022-01-22, A marks actual dates.

## Calendars

- Standard: Mon-Fri 08:00-12:00, 13:00-17:00; Sat-Sun off.
- Warranty: Mon-Sun 09:00-17:00.

## Schedule

| ID | WBS | Task | Type | Duration | Start | Finish | Predecessors | Complete | Remaining | Total slack | Free slack | Constraint | Calendar |
| --- | --- | --- | --- | --- | --- | --- | --- | --- | --- | --- | --- | --- | --- |
| 1 | 1 | **Small Business DCO + Lending** |  | 203d? | 2021-04-14 A | 2022-01-22 |  | 27% | 147.34d? | 0d |  |  |  |
| 2 | 1.1 | **Execution** |  | 91d? | 2021-04-14 A | 2021-08-18 |  | 85% | 13.65d? |  |  |  |  |
| 3 | 1.1.1 | Sprint 12 |  | 10d | 2021-04-14 A | 2021-04-27 A |  | 100% |  |  |  | start no earlier than 2021-04-14 |  |
| 4 | 1.1.2 | Sprint 13 |  | 10d | 2021-04-28 A | 2021-05-11 A | 3 | 100% |  |  |  |  |  |
| 5 | 1.1.3 | Sprint 14 |  | 10d | 2021-05-12 A | 2021-05-25 A | 4 | 100% |  |  |  |  |  |
| 6 | 1.1.4 | Sprint 15 |  | 10d | 2021-05-26 A | 2021-06-08 A | 5 | 100% |  |  |  |  |  |
| 7 | 1.1.5 | Sprint 16 |  | 10d | 2021-06-09 A | 2021-06-22 A | 6 | 100% |  |  |  |  |  |
| 8 | 1.1.6 | **Sprint 17** |  | 1d | 2021-06-23 A | 2021-06-23 A | 7 | 100% |  |  |  |  |  |
| 9 | 1.1.6.1 | GET: Sprint 18 Dependency: Personal Hard Pull Service from BIG | manual | 1d | 2021-06-23 A | 2021-06-23 A |  | 100% |  |  |  |  |  |
| 10 | 1.1.7 | **Sprint 18** |  | 10d | 2021-07-07 | 2021-07-20 | 8 |  |  |  |  |  |  |
| 11 | 1.1.7.1 | GET: Sprint 19 Dependency: Infinity Services/OLB Account Creation Test Data from CWB |  | 1d | 2021-07-16 | 2021-07-16 |  |  |  | 135d |  | start no earlier than 2021-07-16 |  |
| 12 | 1.1.7.2 | GET: Sprint 19 Dependency: Commercial Hard Pull Endpoint from BIG |  | 1d | 2021-07-09 | 2021-07-09 |  |  |  | 140d |  | start no earlier than 2021-07-09 |  |
| 13 | 1.1.7.3 | GIVE: Sprint 18 Demo |  | 1d | 2021-07-20 | 2021-07-20 |  |  |  | 133d |  | start no earlier than 2021-07-20 |  |
| 14 | 1.1.8 | GIVE: Deliver Sprint 18 Build to CWB-SIT |  | 1d | 2021-07-21 | 2021-07-21 |  |  |  | 132d |  | start no earlier than 2021-07-21 |  |
| 15 | 1.1.9 | **Sprint 19** |  | 10d | 2021-07-21 | 2021-08-03 | 10 |  |  |  |  |  |  |
| 16 | 1.1.9.1 | GET: Sprint 20 Dependency: Final Copy Changes for CWBSB-390, 219, and Product Spec (SLA Cash Management) from CWB |  | 1d | 2021-07-21 | 2021-07-21 |  |  |  | 131d |  |  |  |
| 17 | 1.1.9.2 | GIVE: Sprint 19 Demo |  | 1d | 2021-08-03 | 2021-08-03 |  |  |  | 123d |  | start no earlier than 2021-08-03 |  |
| 18 | 1.1.10 | GIVE: Deliver Sprint 19 Build to CWB-SIT |  | 1d | 2021-08-04 | 2021-08-04 |  |  |  | 122d |  | start no earlier than 2021-08-04 |  |
| 19 | 1.1.11 | **Sprint 20** |  | 10d | 2021-08-04 | 2021-08-17 | 15 |  |  |  |  |  |  |
| 20 | 1.1.11.1 | GIVE: Sprint 20 Demo |  | 1d | 2021-08-17 | 2021-08-17 |  |  |  | 113d |  | start no earlier than 2021-08-17 |  |
| 21 | 1.1.12 | GIVE: Deliver Sprint 20 Build to CWB-SIT |  | 1d | 2021-08-18 | 2021-08-18 |  |  |  | 112d |  | start no earlier than 2021-08-18 |  |
| 22 | 1.2 | **Testing** |  | 28d | 2021-08-18 | 2021-09-24 |  |  |  |  |  |  |  |
| 23 | 1.2.1 | CWB UAT, Perf, Pen Testing |  | 30d | 2021-08-16 | 2021-09-24 |  |  |  | 85d |  | finish no earlier than 2021-09-24 |  |
| 24 | 1.3 | **Deploy** |  | 81.88d | 2021-09-16 | 2022-01-07 | 22 |  |  |  |  |  |  |
| 25 | 1.3.1 | CAB Approval |  | 1d | 2021-09-21 | 2021-09-21 |  |  |  | 84d | 0d | start no earlier than 2021-09-21 |  |
| 26 | 1.3.2 | Prep for PROD Deployment |  | 4d | 2021-09-22 | 2021-09-27 | 25 |  |  | 84d |  |  |  |
| 27 | 1.3.3 | Prod Deployment |  | 1d | 2021-10-25 | 2021-10-25 |  |  |  | -1d | 0d | start no earlier than 2021-10-25 |  |
| 28 | 1.3.4 | Warranty Reporting Period (90 days) | manual | 90d | 2021-10-25 | 2022-01-22 | 27 |  |  |  |  | start no earlier than 2021-10-25 | Warranty |

Notes:
- 26: Needs to be coordinated with DB R1.1
