# VCOO Tem Confirmation

Schedule from MS Project, 2022-05-16 to 2022-09-16, A marks actual dates.

## Calendars

- Standard: Mon-Fri 08:00-12:00, 13:00-17:00; Sat-Sun off.

## Resources

| Resource |
| --- |
| OPSIT1 |
| Dependency on 1 additional environment for - 7317 (Multiple sessions/user)- To review with Sundhar |
| dev07 |
| Fixes done here will need to be done in R1.2 upgrade area as well |
| cwb-uat |

## Schedule

| ID | WBS | Task | Type | Duration | Start | Finish | Predecessors | Complete | Remaining | Total slack | Free slack | Constraint | Resources | Work | Actual work |
| --- | --- | --- | --- | --- | --- | --- | --- | --- | --- | --- | --- | --- | --- | --- | --- |
| 1 | 1 | VCOO: Merge with R1.1 |  | 30d | 2022-05-23 A | 2022-07-01 A |  | 100% |  |  |  | start no earlier than 2022-05-23 | OPSIT1 | 240h | 240h |
| 2 | 2 | Availability of Dev08 for HF merge |  | 1d? | 2022-05-27 A | 2022-05-27 A |  | 100% |  |  |  | start no earlier than 2022-05-27 |  |  |  |
| 3 | 3 | Revised HF 1.1 bug fix timelines |  | 20d | 2022-05-16 A | 2022-06-10 A |  | 100% |  |  |  |  | Dependency on 1 additional environment for - 7317 (Multiple sessions/user)- To review with Sundhar | 160h | 160h |
| 4 | 4 | Temenos Dev Complete (HF) | milestone | 0d | 2022-08-09 A | 2022-08-09 A |  | 100% |  |  |  |  |  |  |  |
| 5 | 5 | Tememos Dev Complete (VCOO) | milestone | 0d | 2022-08-09 A | 2022-08-09 A |  | 100% |  |  |  | start no earlier than 2022-08-09 |  |  |  |
| 6 | 6 | Temenos QA Testing |  | 2d | 2022-08-09 A | 2022-08-10 A | 5, 4 | 100% |  |  |  |  |  |  |  |
| 7 | 7 | **Hotfix** |  | 29d | 2022-08-09 A | 2022-09-16 |  | 22% | 22.56d | 0d |  |  |  |  |  |
| 8 | 7.1 | Receive VCOO/HF Demo |  | 1d | 2022-08-09 A | 2022-08-09 A | 5 | 100% |  |  |  |  |  |  |  |
| 9 | 7.2 | Receive VCOO/HF Build (Confirmed) |  | 1d | 2022-08-11 A | 2022-08-11 A | 6 | 100% |  |  |  |  |  |  |  |
| 10 | 7.3 | Receive VCOO/HF Build (Shifted from the 18th) |  | 1d | 2022-08-19 | 2022-08-19 | 9FS+5d |  |  | 0d |  |  |  |  |  |
| 11 | 7.4 | Quality Check Point |  | 1d | 2022-08-22 | 2022-08-22 | 10 |  |  | 19d |  |  |  |  |  |
| 12 | 7.5 | Receive VCOO/HF Build (Placeholder) |  | 1d | 2022-08-26 | 2022-08-26 | 10FS+4d |  |  | 0d |  |  |  |  |  |
| 13 | 7.6 | Quality Check Point |  | 1d | 2022-08-29 | 2022-08-29 | 12 |  |  | 14d |  |  |  |  |  |
| 14 | 7.7 | Receive VCOO/HF Build (Placeholder) |  | 1d | 2022-09-02 | 2022-09-02 | 12FS+4d |  |  | 0d |  |  |  |  |  |
| 15 | 7.8 | Receive VCOO/HF Build (Placeholder) |  | 1d | 2022-09-09 | 2022-09-09 | 14FS+4d |  |  | 0d |  |  |  |  |  |
| 16 | 7.9 | Receive FINAL VCOO/HF Build (Placeholder) |  | 1d | 2022-09-16 | 2022-09-16 | 15FS+4d |  |  | 0d |  |  |  |  |  |
| 17 | 8 | **VCOO: CWB Testing** |  | 10d? | 2022-08-15 | 2022-08-26 |  |  |  | 14d |  |  | dev07 | 104h |  |
| 18 | 8.1 | VCOO Functional Testing |  | 5d | 2022-08-15 | 2022-08-19 | 1FS+18d, 9 |  |  | 14d | 0d | start no earlier than 2022-08-15 |  |  |  |
| 19 | 8.2 | VCOO Functional Defect Re-testing |  | 1d? | 2022-08-17 | 2022-08-17 | 18SS+2d |  |  | 14d | 0d |  |  |  |  |
| 20 | 8.3 | VCOO/HF E2E Testing and Defect Fixes |  | 1d? | 2022-08-18 | 2022-08-18 | 19 |  |  | 14d | 0d |  |  |  |  |
| 21 | 8.4 | VCOO: Merge with R1.1/Alerts/HF Regression |  | 1d? | 2022-08-19 | 2022-08-19 | 20 |  |  | 14d | 0d |  | Fixes done here will need to be done in R1.2 upgrade area as well; dev07 | 16h |  |
| 22 | 8.5 | Initial performance run |  | 1d? | 2022-08-22 | 2022-08-22 | 18 |  |  | 19d |  |  |  |  |  |
| 23 | 8.6 | Performance Test |  | 1d? | 2022-08-22 | 2022-08-22 | 21 |  |  | 14d | 0d |  | cwb-uat | 8h |  |
| 24 | 8.7 | Defect Fixes and Retest |  | 1d? | 2022-08-23 | 2022-08-23 | 23 |  |  | 14d | 0d |  |  |  |  |
| 25 | 8.8 | BAT Testing | inactive | 1d? | 2022-08-24 | 2022-08-24 | 24 |  |  | 14d | 0d |  | cwb-uat | 8h |  |
| 26 | 8.9 | Penetration Testing |  | 1d? | 2022-08-24 | 2022-08-24 | 24 |  |  | 14d | 0d |  |  |  |  |
| 27 | 8.10 | Pen test report |  | 1d? | 2022-08-24 | 2022-08-24 | 26SS |  |  | 17d |  |  |  |  |  |
| 28 | 8.11 | Fixes and Retest (Perf, Pen, BAT) |  | 1d? | 2022-08-25 | 2022-08-25 | 25, 26 |  |  | 14d | 0d |  |  |  |  |
| 29 | 8.12 | Run Book Dress Rehearsal |  | 1d? | 2022-08-26 | 2022-08-26 | 28 |  |  | 15d | 1d |  |  |  |  |
| 30 | 8.13 | Contingency |  | 1d? | 2022-08-26 | 2022-08-26 | 28 |  |  | 14d | 0d |  |  |  |  |
| 31 | 8.14 | Go-No-Go |  | 1d? | 2022-08-26 | 2022-08-26 | 28 |  |  | 15d |  |  |  |  |  |
| 32 | 9 | Go Live-VCOO | milestone | 0d | 2022-08-29 | 2022-08-29 | 29, 30FS+1d |  |  | 14d |  |  |  |  |  |

Notes:
- 3: Dependency on 1 additional environment for - 7317 (Multiple sessions/user)- To review with Sundhar
